# X01 website

Schedule from MS Project, 2025-06-25 to 2025-08-01, A marks actual dates.

## Calendars

- Standard: Mon-Fri 08:00-12:00, 13:00-17:00; Sat-Sun off.

## Resources

| Resource |
| --- |
| Nam TO |
| Đinh Lê Hùng - ITD |
| Lê Sỹ Thiện - ITD |
| Ngô Đức Huy - ITD |
| Nguyễn Hoài Nam |
| Nguyễn Quang Dũng - ITD |
| Nguyễn Thị Vân Anh - ITD |
| Nguyễn Trọng Hưng |
| Nguyễn Văn Anh - ITD |
| Nguyễn Xuân Triều - ITD |
| Phan Trần Hùng - ITD |
| Tạ Khánh Du - ITD |
| Trịnh Thị Hoa |
| Trương Giang Long |
| Vũ Tiến Dũng - ITD |
| Toàn bộ team |
| Thiện |
| Toàn thể team |

## Schedule

| ID | WBS | Task | Type | Duration | Start | Finish | Predecessors | Complete | Remaining | Total slack | Constraint | Resources | Work | Actual work |
| --- | --- | --- | --- | --- | --- | --- | --- | --- | --- | --- | --- | --- | --- | --- |
| 1 | 1 | **X01 website** |  | 28d? | 2025-06-25 A | 2025-08-01 |  | 68% | 8.96d? | 0d |  | Toàn thể team | 448h | 196h |
| 2 | 1.1 | Kickoff team | manual | 1d | 2025-07-09 A | 2025-07-09 A |  | 100% |  |  |  | Toàn thể team | 8h | 8h |
| 3 | 1.2 | **Gather nhân sự cho team** |  | 1d | 2025-07-09 A | 2025-07-10 |  | 50% | 0.5d | 16.5d |  | Toàn thể team | 24h | 12h |
| 4 | 1.2.1 | Nhân sự BA, Dev, TO, Data lake |  | 0.5d | 2025-07-09 A | 2025-07-09 A |  | 100% |  |  | finish no earlier than 2025-07-09 | Nam TO | 4h | 4h |
| 5 | 1.2.2 | **Nhân sự Big data** |  | 0.5d | 2025-07-10 A | 2025-07-10 |  |  | 0.5d | 16.5d |  |  | 8h |  |
| 6 | 1.2.2.1 | Gửi email |  | 0.5d | 2025-07-10 A | 2025-07-10 |  |  | 0.5d | 16.5d | start no earlier than 2025-07-10 | Nam TO | 4h |  |
| 7 | 1.2.2.2 | Tiếp nhận thông tin |  | 0.5d | 2025-07-10 A | 2025-07-10 |  |  | 0.5d | 16.5d | start no earlier than 2025-07-10 | Nam TO | 4h |  |
| 8 | 1.2.3 | Lập mailing list |  | 0.5d | 2025-07-10 A | 2025-07-10 A |  | 100% |  |  | start no earlier than 2025-07-10 | Lê Sỹ Thiện - ITD | 4h | 4h |
| 9 | 1.3 | **Giai đoạn phân tích, thiết kế** |  | 15d? | 2025-06-25 A | 2025-07-15 |  | 79% | 3.16d? | 13d |  |  | 176h | 144h |
| 10 | 1.3.1 | Thiết lập ý tưởng |  | 4d? | 2025-06-25 A | 2025-06-30 A |  | 100% |  |  |  | Nam TO | 32h | 32h |
| 11 | 1.3.2 | **Xây dựng URD** |  | 12d | 2025-06-25 A | 2025-07-10 A |  | 100% |  |  |  |  | 96h | 96h |
| 12 | 1.3.2.1 | Workshop về nhu cầu | manual | 1d | 2025-07-09 A | 2025-07-09 A |  | 100% |  |  |  | Lê Sỹ Thiện - ITD; Nguyễn Hoài Nam; Nguyễn Thị Vân Anh - ITD | 24h | 24h |
| 13 | 1.3.2.2 | Dự thảo URD | manual | 6d | 2025-06-25 A | 2025-07-02 A |  | 100% |  |  |  | Nam TO | 48h | 48h |
| 14 | 1.3.2.3 | Tham gia ý kiến | manual | 1d | 2025-07-09 A | 2025-07-09 A |  | 100% |  |  |  | Lê Sỹ Thiện - ITD; Nguyễn Thị Vân Anh - ITD | 16h | 16h |
| 15 | 1.3.2.4 | Hoàn thành URD | manual | 1d | 2025-07-10 A | 2025-07-10 A | 14 | 100% |  |  |  | Nam TO | 8h | 8h |
| 16 | 1.3.3 | **Xây dựng SRS** |  | 4d | 2025-07-10 A | 2025-07-15 | 11 | 33% | 2.67d | 13d |  |  | 48h | 16h |
| 17 | 1.3.3.1 | Phân tích gap giữa URD & SRS | manual | 1d | 2025-07-10 A | 2025-07-10 A |  | 100% |  |  |  | Nguyễn Thị Vân Anh - ITD | 8h | 8h |
| 18 | 1.3.3.2 | **Hoàn thiện SRS dựa trên gap đã phân tích** |  | 2d | 2025-07-11 A | 2025-07-14 | 17SS | 25% | 1.5d | 0d |  |  | 32h | 8h |
| 19 | 1.3.3.2.1 | Nghiệp vụ xử lý | manual | 1d | 2025-07-11 A | 2025-07-11 |  |  | 1d |  |  | Nam TO | 8h |  |
| 20 | 1.3.3.2.2 | BA xử lý | manual | 2d | 2025-07-11 A | 2025-07-14 |  |  | 2d |  |  | Nguyễn Thị Vân Anh - ITD | 16h |  |
| 21 | 1.3.3.2.3 | Dev xử lý | manual | 1d | 2025-07-11 A | 2025-07-11 A |  | 100% |  |  |  | Nguyễn Văn Anh - ITD | 8h | 8h |
| 22 | 1.3.3.3 | Hoàn thiện SRS |  | 1d | 2025-07-15 | 2025-07-15 | 18 |  |  | 13d |  | Nguyễn Thị Vân Anh - ITD | 8h |  |
| 23 | 1.4 | **Giai đoạn phát triển** |  | 15d? | 2025-07-14 A | 2025-08-01 |  |  | 15d? | 0d |  |  | 16h |  |
| 24 | 1.4.1 | Workshop với nghiệp vụ, BA | manual | 0.5d | 2025-07-14 A | 2025-07-14 |  |  | 0.5d |  |  | Lê Sỹ Thiện - ITD; Nguyễn Hoài Nam; Nguyễn Thị Vân Anh - ITD | 12h |  |
| 25 | 1.4.2 | Lập kế hoạch phát triển (backlog tổng) & thứ tự ưu tiên & timeline |  | 0.5d | 2025-07-14 | 2025-07-14 | 24 |  |  | 14d |  | Toàn thể team | 4h |  |

Notes:
- 17: BA nói không có gap, chỉ một số thông tin chi tiết cần sẽ hỏi thêm
- 19: Bổ sung thêm panel quản trị users, email, role và thêm phần chat với AI

| ID | WBS | Task | Type | Duration | Start | Finish | Predecessors | Total slack | Constraint |
| --- | --- | --- | --- | --- | --- | --- | --- | --- | --- |
| 26 | 1.4.3 | **Sprint 1** |  | 11d? | 2025-07-18 | 2025-08-01 |  | 0d |  |
| 27 | 1.4.3.1 | Planning | manual | 0.5d | 2025-07-18 | 2025-07-18 |  |  |  |
| 28 | 1.4.3.2 | **Implement theo kế hoạch tuần 1** |  | 5d? | 2025-07-21 | 2025-07-25 |  |  |  |
| 29 | 1.4.3.2.1 | Ví dụ: Xây dựng CMS | manual | 1d? | 2025-07-21 | 2025-07-21 |  |  |  |
| 30 | 1.4.3.2.2 | Ví dụ: Port frontend sang Angular | manual | 1d? | 2025-07-21 | 2025-07-21 |  |  |  |
| 31 | 1.4.3.2.3 | Ví dụ: Xây dựng DB | manual | 1d? | 2025-07-21 | 2025-07-21 |  |  |  |
| 32 | 1.4.3.2.4 | Ví dụ: Thu thập dữ liệu sáng kiến | manual | 1d? | 2025-07-21 | 2025-07-21 |  |  |  |
| 33 | 1.4.3.3 | Mini Retro & Review 1 |  | 0.5d | 2025-07-25 | 2025-07-25 |  | 0.5d | start no earlier than 2025-07-25 |
| 34 | 1.4.3.4 | **Implement theo kế hoạch tuần 2** |  | 5d? | 2025-07-28 | 2025-08-01 | 33 |  |  |
| 35 | 1.4.3.4.1 | Ví dụ: Xây dựng CMS | manual | 1d? | 2025-07-28 | 2025-07-28 |  |  |  |
| 36 | 1.4.3.4.2 | Ví dụ: Port frontend sang Angular | manual | 1d? | 2025-07-28 | 2025-07-28 |  |  |  |
| 37 | 1.4.3.4.3 | Ví dụ: Xây dựng DB | manual | 1d? | 2025-07-28 | 2025-07-28 |  |  |  |
| 38 | 1.4.3.4.4 | Ví dụ: Thu thập dữ liệu sáng kiến | manual | 1d? | 2025-07-28 | 2025-07-28 |  |  |  |
| 39 | 1.4.3.5 | Retro, Review & Planning cho Sprint 2 | manual | 1d | 2025-08-01 | 2025-08-01 |  |  |  |
